# DiagramaTalleresCorregido

How a schedule from MS Project changed from version to version. A marks actual dates.

## Version 1 (saved 2026-10-19, file DiagramaTalleresCorregido.mpp)

Note of the change: Merge branch 'main' of https://github.com/Gonzzzalo17/inscripciones-talleres into gonzalo

| ID | WBS | Task | Duration | Start | Finish | Predecessors | Complete | Total float |
| --- | --- | --- | --- | --- | --- | --- | --- | --- |
| 1 | 1 | **FASE 0: ARQUITECTURA Y BASE DE DATOS** | 5d | 2026-10-07 09:00 A | 2026-10-13 19:00 |  | 94% |  |
| 2 |  | 0.1 Dos bases de datos (principal y estudiantes) y router EstudiantesRouter | 2d | 2026-10-07 09:00 A | 2026-10-08 19:00 A |  | 100% |  |
| 3 |  | 0.2 Modelos Taller, Inscripción, Historial, Usuario y EstudianteEstatico (solo lectura) | 1.5d | 2026-10-09 09:00 A | 2026-10-12 13:00 A | 2 | 100% |  |
| 4 |  | 0.3 Revisar reglas contra el Excel y acordar los casos de prueba | 1.5d | 2026-10-07 09:00 A | 2026-10-08 13:00 A |  | 100% |  |
| 5 |  | 0.4 Configurar SQL | 1.5d | 2026-10-12 15:00 A | 2026-10-13 19:00 | 3 | 75% | 11d |
| 6 |  | Hito: modelos listos para desarrollar las historias | 0d | 2026-10-12 13:00 | 2026-10-12 13:00 | 3, 4 |  | 1.12d |
| 7 | 3 | **HU-01: Publicar talleres con código único** | 3.5d | 2026-10-12 15:00 A | 2026-10-15 19:00 |  | 61% | 10d |
| 8 |  | HU-01 · Lógica: registrar y editar taller, código TAL-DAN-01 | 1.5d | 2026-10-12 15:00 A | 2026-10-13 19:00 | 6 | 75% | 1.25d |
| 9 |  | HU-01 · Pruebas pytest | 0.5d | 2026-10-14 09:00 A | 2026-10-14 13:00 A | 8 | 100% |  |
| 10 |  | HU-01 · HTML básico: formulario de taller y lista de talleres | 0.5d | 2026-10-14 15:00 A | 2026-10-14 19:00 | 6, 9 | 50% | 0.25d |
| 11 |  | HU-01 · Conectar vista con la lógica y la base de datos | 1d | 2026-10-15 09:00 A | 2026-10-15 19:00 | 10, 8 | 25% | 10d |
| 12 |  | Hito: HU-01 terminada y probada | 0d | 2026-10-15 19:00 | 2026-10-15 19:00 | 9, 11 |  | 10d |
| 13 | 4 | **HU-02: Solicitar una plaza** | 4d | 2026-10-12 15:00 A | 2026-10-16 13:00 |  | 86% | 9.5d |
| 14 |  | HU-02 · Lógica: ajustar código existente: confirmar, espera 20 % y rechazos | 1d | 2026-10-12 15:00 A | 2026-10-13 13:00 A | 6 | 100% |  |
| 15 |  | HU-02 · Pruebas pytest | 1d | 2026-10-13 15:00 A | 2026-10-14 13:00 A | 14 | 100% |  |
| 16 |  | HU-02 · HTML básico: botón y mensaje 'Solicitar plaza' | 0.5d | 2026-10-15 09:00 A | 2026-10-15 13:00 A | 10 | 100% |  |
| 17 |  | HU-02 · Conectar vista con la lógica y la base de datos | 1d | 2026-10-15 15:00 A | 2026-10-16 13:00 | 16, 14 | 50% | 9.5d |
| 18 |  | Hito: HU-02 terminada y probada | 0d | 2026-10-16 13:00 | 2026-10-16 13:00 | 15, 17 |  | 9.5d |
| 19 | 5 | **HU-03: Registrar inscripciones como operador** | 3d | 2026-10-14 15:00 A | 2026-10-19 13:00 A |  | 100% |  |
| 20 |  | HU-03 · Lógica: registrar a nombre del participante | 0.5d | 2026-10-14 15:00 A | 2026-10-14 19:00 A | 15 | 100% |  |
| 21 |  | HU-03 · Pruebas pytest | 0.5d | 2026-10-15 09:00 A | 2026-10-15 13:00 A | 20 | 100% |  |
| 22 |  | HU-03 · HTML básico: formulario del operador | 0.5d | 2026-10-15 15:00 A | 2026-10-15 19:00 A | 16 | 100% |  |
| 23 |  | HU-03 · Conectar vista con la lógica y la base de datos | 1d | 2026-10-16 15:00 A | 2026-10-19 13:00 A | 17, 20, 22 | 100% |  |
| 24 |  | Hito: HU-03 terminada y probada | 0d | 2026-10-19 13:00 A | 2026-10-19 13:00 A | 21, 23 | 100% |  |
| 25 | 6 | **HU-04: Definir y cambiar el cupo** | 2.5d | 2026-10-16 09:00 A | 2026-10-20 13:00 |  | 36% | 7.5d |
| 26 |  | HU-04 · Lógica: aumentar cupo, confirmar espera y guardar historial | 1.5d | 2026-10-16 09:00 A | 2026-10-19 13:00 | 9, 14, 22 | 50% | 0.5d |
| 27 |  | HU-04 · Pruebas pytest | 1d | 2026-10-19 15:00 A | 2026-10-20 13:00 | 26 | 50% | 0.25d |
| 28 |  | HU-04 · HTML básico: cambiar cupo con motivo | 0.5d | 2026-10-19 15:00 | 2026-10-19 19:00 | 22, 26 |  | 0.5d |
| 29 |  | HU-04 · Conectar vista con la lógica y la base de datos | 0.5d | 2026-10-20 09:00 | 2026-10-20 13:00 | 28, 26 |  | 4.5d |
| 30 |  | Hito: HU-04 terminada y probada | 0d | 2026-10-20 13:00 | 2026-10-20 13:00 | 27, 29 |  | 7.5d |
| 31 | 7 | **HU-05: Cancelar mi inscripción** | 4.5d | 2026-10-15 15:00 A | 2026-10-21 19:00 |  | 40% | 6d |
| 32 |  | HU-05 · Lógica: ajustar código existente: cancelar hasta 3 h antes | 0.5d | 2026-10-15 15:00 A | 2026-10-15 19:00 A | 21 | 100% |  |
| 33 |  | HU-05 · Pruebas pytest: hasta 3 h antes, después del plazo, cancelación repetida | 1d | 2026-10-20 09:00 A | 2026-10-20 19:00 | 32, 28 | 50% | 0.25d |
| 34 |  | HU-05 · HTML básico: botón 'Cancelar' | 0.5d | 2026-10-21 09:00 | 2026-10-21 13:00 | 28, 33 |  | 0.25d |
| 35 |  | HU-05 · Conectar vista con la lógica y la base de datos | 0.5d | 2026-10-21 15:00 | 2026-10-21 19:00 | 32, 34 |  | 6d |
| 36 |  | Hito: HU-05 terminada y probada | 0d | 2026-10-21 19:00 | 2026-10-21 19:00 | 33, 35 |  | 6d |
| 37 | 8 | **HU-06: Controlar cancelaciones y promover la espera** | 4.5d | 2026-10-16 09:00 A | 2026-10-22 13:00 |  | 15% | 5.5d |
| 38 |  | HU-06 · Lógica: ajustar código existente: promoción automática | 0.5d | 2026-10-16 09:00 A | 2026-10-16 13:00 | 32 | 25% | 0.75d |
| 39 |  | HU-06 · Pruebas pytest: promoción del primero, mensaje 'Felicidades, ya estás inscrito', posiciones | 1d | 2026-10-16 15:00 | 2026-10-19 13:00 | 38 |  | 0.75d |
| 40 |  | HU-06 · HTML básico: cancelación del operador | 0.5d | 2026-10-21 15:00 A | 2026-10-21 19:00 | 34 | 50% | 0d |
| 41 |  | HU-06 · Conectar vista con la lógica y la base de datos | 0.5d | 2026-10-22 09:00 | 2026-10-22 13:00 | 38, 40 |  | 5.5d |
| 42 |  | Hito: HU-06 terminada y probada | 0d | 2026-10-22 13:00 | 2026-10-22 13:00 | 39, 41 |  | 5.5d |
| 43 | 9 | **HU-07: Consultar la ocupación de un taller** | 3.5d | 2026-10-19 15:00 | 2026-10-22 19:00 |  |  | 2.5d |
| 44 |  | HU-07 · Lógica: contar ocupadas, libres y espera | 0.5d | 2026-10-19 15:00 | 2026-10-19 19:00 | 26 |  | 5d |
| 45 |  | HU-07 · Pruebas pytest: ocupadas, libres, espera/máximo; la consulta no cambia datos | 0.5d | 2026-10-20 15:00 | 2026-10-20 19:00 | 44, 29 |  | 4.5d |
| 46 |  | HU-07 · HTML básico: tabla de ocupación | 0.5d | 2026-10-22 09:00 | 2026-10-22 13:00 | 40 |  | 0d |
| 47 |  | HU-07 · Conectar vista con la lógica y la base de datos | 0.5d | 2026-10-22 15:00 | 2026-10-22 19:00 | 44, 46 |  | 5d |
| 48 |  | Hito: HU-07 terminada y probada | 0d | 2026-10-22 19:00 | 2026-10-22 19:00 | 45, 47 |  | 5d |
| 49 | 10 | **HU-08: Consultar el estado de mis inscripciones** | 4d | 2026-10-19 15:00 | 2026-10-23 13:00 |  |  | 0.75d |
| 50 |  | HU-08 · Lógica: estado y posición por taller | 0.5d | 2026-10-19 15:00 | 2026-10-19 19:00 | 32, 39 |  | 0.75d |
| 51 |  | HU-08 · Pruebas pytest: estado y posición de cada inscripción | 0.5d | 2026-10-20 15:00 | 2026-10-20 19:00 | 27, 50 |  | 0.25d |
| 52 |  | HU-08 · HTML básico: 'Mis inscripciones' | 0.5d | 2026-10-22 15:00 | 2026-10-22 19:00 | 46 |  | 0d |
| 53 |  | HU-08 · Conectar vista con la lógica y la base de datos | 0.5d | 2026-10-23 09:00 | 2026-10-23 13:00 | 50, 52 |  | 2.5d |
| 54 |  | Hito: HU-08 terminada y probada | 0d | 2026-10-23 13:00 | 2026-10-23 13:00 | 51, 53 |  | 4.5d |
| 55 | 11 | **HU-09: Historial de cancelaciones y bloqueo (provisional)** | 4d | 2026-10-21 09:00 A | 2026-10-26 19:00 |  | 8% | 3d |
| 56 |  | HU-09 · Lógica: historial y bloqueo provisional | 1d | 2026-10-21 09:00 A | 2026-10-21 19:00 | 39, 51 | 25% | 1d |
| 57 |  | HU-09 · Pruebas pytest: historial ordenado, más de 3 en 72 h bloquea | 1d | 2026-10-23 09:00 | 2026-10-23 19:00 | 52, 56 |  | 0d |
| 58 |  | HU-09 · HTML básico: historial del participante | 0.5d | 2026-10-26 09:00 | 2026-10-26 13:00 | 52, 57 |  | 1.5d |
| 59 |  | HU-09 · Conectar vista con la lógica y la base de datos | 0.5d | 2026-10-26 15:00 | 2026-10-26 19:00 | 56, 58 |  | 3d |
| 60 |  | Hito: HU-09 terminada y probada | 0d | 2026-10-26 19:00 | 2026-10-26 19:00 | 57, 59 |  | 3d |
| 61 | 12 | **HU-10: Buscar inscripciones por participante o taller** | 4.5d | 2026-10-21 09:00 | 2026-10-27 13:00 |  |  | 2.5d |
| 62 |  | HU-10 · Lógica: búsqueda por participante o taller | 0.5d | 2026-10-21 09:00 | 2026-10-21 13:00 | 27, 45 |  | 4.5d |
| 63 |  | HU-10 · Pruebas pytest: búsqueda por participante y por taller sin cambiar datos | 0.5d | 2026-10-23 15:00 | 2026-10-23 19:00 | 53, 62 |  | 2.5d |
| 64 |  | HU-10 · HTML básico: buscador del operador | 0.5d | 2026-10-26 15:00 | 2026-10-26 19:00 | 58 |  | 1.5d |
| 65 |  | HU-10 · Conectar vista con la lógica y la base de datos | 0.5d | 2026-10-27 09:00 | 2026-10-27 13:00 | 62, 64 |  | 1.5d |
| 66 |  | Hito: HU-10 terminada y probada | 0d | 2026-10-27 13:00 | 2026-10-27 13:00 | 63, 65 |  | 2.5d |
| 67 | 13 | **HU-11: Lista de confirmados para el instructor** | 2.5d | 2026-10-26 09:00 | 2026-10-28 13:00 |  |  | 1.5d |
| 68 |  | HU-11 · Lógica: listar solo confirmados | 0.5d | 2026-10-26 09:00 | 2026-10-26 13:00 | 63 |  | 2.5d |
| 69 |  | HU-11 · Pruebas pytest: solo aparecen confirmados | 0.5d | 2026-10-27 15:00 | 2026-10-27 19:00 | 65, 68 |  | 1.5d |
| 70 |  | HU-11 · HTML básico: lista del instructor | 0.5d | 2026-10-27 09:00 | 2026-10-27 13:00 | 64 |  | 2d |

| ID | WBS | Task | Duration | Start | Finish | Predecessors | Total float |
| --- | --- | --- | --- | --- | --- | --- | --- |
| 71 |  | HU-11 · Conectar vista con la lógica y la base de datos | 0.5d | 2026-10-28 09:00 | 2026-10-28 13:00 | 68, 69, 70 | 1.5d |
| 72 |  | Hito: HU-11 terminada y probada | 0d | 2026-10-28 13:00 | 2026-10-28 13:00 | 69, 71 | 1.5d |
| 73 | 14 | **FASE FINAL: INTEGRACIÓN, CAMBIOS Y ENTREGA** | 12d | 2026-10-14 09:00 | 2026-10-29 19:00 |  | 0d |
| 74 |  | Cargar datos de demostración en SQL | 1d | 2026-10-14 09:00 | 2026-10-14 19:00 | 5 | 11d |
| 75 |  | Solicitudes simultáneas por la última plaza (TAL-RC-01) | 1d | 2026-10-26 09:00 | 2026-10-26 19:00 | 57 | 0d |
| 76 |  | CU-17 · Cancelar un taller completo, lógica y pruebas (provisional) | 1d | 2026-10-27 09:00 | 2026-10-27 19:00 | 57, 75 | 2d |
| 77 |  | CU-18 · Reducir el cupo, lógica y pruebas (cuando el cliente defina quién pasa a espera) | 1d | 2026-10-22 09:00 | 2026-10-22 19:00 | 27, 56 | 5d |
| 78 |  | Pruebas de integración con la base de datos y CI en main | 1d | 2026-10-27 09:00 | 2026-10-27 19:00 | 57, 75 | 0d |
| 79 |  | README, instrucciones y matriz requisitos-pruebas | 1d | 2026-10-28 09:00 | 2026-10-28 19:00 | 78 | 0d |
| 80 |  | Ensayo de la demostración y correcciones | 1d | 2026-10-29 09:00 | 2026-10-29 19:00 | 79 | 0d |

## Version 2 (data date 2026-10-26, saved 2026-10-26, file DiagramaIncremento1.0.mpp)

Note of the change: Reemplazar Gantt por DiagramaIncremento1.0: avance al 26/10, HU-12, responsables y fechas de hitos

Last finish 2026-10-29 → 2026-11-02 (+4d). Complete tasks 13 → 22.

Added:

| ID | Task | Duration | Start | Finish | Predecessors | Constraint | Resources |
| --- | --- | --- | --- | --- | --- | --- | --- |
| 61 | **HU-12: Registro e inicio de sesión** | 8d | 2026-10-21 09:00 A | 2026-10-30 19:00 |  |  |  |
| 62 | HU-12 · Bocetos y recorridos de login y registro | 0.5d | 2026-10-21 09:00 A | 2026-10-21 13:00 A |  |  | Andrea; Gonzalo; Santiago |
| 63 | HU-12 · Lógica: registro con el código de la base estática (CU-19) | 0.5d | 2026-10-26 09:00 | 2026-10-26 13:00 |  | start no earlier than 2026-10-26 09:00 | Andrea |
| 64 | HU-12 · Lógica: inicio de sesión según el rol (CU-20) | 0.5d | 2026-10-26 09:00 | 2026-10-26 13:00 |  | start no earlier than 2026-10-26 09:00 | Santiago |
| 65 | HU-12 · Pruebas pytest: registro e inicio de sesión | 0.5d | 2026-10-27 09:00 | 2026-10-27 13:00 | 63, 64 | start no earlier than 2026-10-27 09:00 | Andrea |
| 66 | HU-12 · HTML básico: pantallas de login y registro | 0.5d | 2026-10-27 09:00 | 2026-10-27 13:00 |  | start no earlier than 2026-10-27 09:00 | Gonzalo |
| 67 | HU-12 · Conectar vista con la lógica y la base de datos | 0.5d | 2026-10-27 15:00 | 2026-10-27 19:00 | 63, 64, 66 |  | Gonzalo |
| 68 | Hito: HU-12 terminada y probada | 0d | 2026-10-27 19:00 | 2026-10-27 19:00 | 65, 67 | start no earlier than 2026-10-27 09:00 |  |
| 87 | Diagramas: clases, secuencia y ER | 1d | 2026-10-15 09:00 A | 2026-10-15 19:00 |  |  | Andrea; Gonzalo; Santiago |
| 90 | Hito: proyecto listo para la entrega | 0d | 2026-11-02 09:00 | 2026-11-02 09:00 |  | start no earlier than 2026-11-02 09:00 |  |

Changed:

| ID | Task | Start | Finish | Duration | Complete | Total float | Predecessors | Other |
| --- | --- | --- | --- | --- | --- | --- | --- | --- |
| 6 | Hito: modelos listos para desarrollar las historias | 2026-10-12 13:00 A | 2026-10-12 13:00 A |  | 0% → 100% | 1.12d → none |  |  |
| 7 | **HU-01: Publicar talleres con código único** |  | 2026-10-15 19:00 → 2026-10-29 09:00 (+14d) | 3.5d → 12.5d | 61% → 79% | 10d → 2d |  |  |
| 10 | HU-01 · HTML básico: formulario de taller y lista de talleres |  |  |  | 50% → 75% | 0.25d → 0.75d |  |  |
| 11 | HU-01 · Conectar vista con la lógica y la base de datos |  |  |  | 25% → 75% | 10d → 11d |  | resources Santiago → Gonzalo |
| 12 | Hito: HU-01 terminada y probada | 2026-10-15 19:00 → 2026-10-29 09:00 (+14d) | 2026-10-15 19:00 → 2026-10-29 09:00 (+14d) |  |  | 10d → 2d |  | constraint none → start no earlier than 2026-10-29 09:00 |
| 13 | **HU-02: Solicitar una plaza** |  | 2026-10-16 13:00 → 2026-10-30 09:00 (+14d) | 4d → 13.5d |  | 9.5d → 1d |  |  |
| 18 | Hito: HU-02 terminada y probada | 2026-10-16 13:00 → 2026-10-30 09:00 (+14d) | 2026-10-16 13:00 → 2026-10-30 09:00 (+14d) |  |  | 9.5d → 1d |  | constraint none → start no earlier than 2026-10-30 09:00 |
| 25 | **HU-04: Definir y cambiar el cupo** |  | 2026-10-20 13:00 → 2026-10-28 09:00 (+8d) | 2.5d → 8d | 36% → 50% | 7.5d → 3d |  |  |
| 27 | HU-04 · Pruebas pytest |  | 2026-10-20 13:00 A |  | 50% → 100% | 0.25d → none |  |  |
| 30 | Hito: HU-04 terminada y probada | 2026-10-20 13:00 → 2026-10-28 09:00 (+8d) | 2026-10-20 13:00 → 2026-10-28 09:00 (+8d) |  |  | 7.5d → 3d |  | constraint none → start no earlier than 2026-10-28 09:00 |
| 31 | **HU-05: Cancelar mi inscripción** |  | 2026-10-21 19:00 → 2026-10-29 09:00 (+8d) | 4.5d → 9.5d |  | 6d → 2d |  |  |
| 36 | Hito: HU-05 terminada y probada | 2026-10-21 19:00 → 2026-10-29 09:00 (+8d) | 2026-10-21 19:00 → 2026-10-29 09:00 (+8d) |  |  | 6d → 2d |  | constraint none → start no earlier than 2026-10-29 09:00 |
| 37 | **HU-06: Controlar cancelaciones y promover la espera** |  | 2026-10-22 13:00 → 2026-10-29 09:00 (+7d) | 4.5d → 9d | 15% → 60% | 5.5d → 2d |  |  |
| 38 | HU-06 · Lógica: ajustar código existente: promoción automática |  | 2026-10-16 13:00 A |  | 25% → 100% | 0.75d → none |  |  |
| 39 | HU-06 · Pruebas pytest: promoción del primero, mensaje 'Felicidades, ya estás inscrito', posiciones | 2026-10-16 15:00 A | 2026-10-19 13:00 A |  | 0% → 100% | 0.75d → none |  |  |
| 40 | HU-06 · HTML básico: cancelación del operador | 2026-10-21 15:00 A → 2026-10-21 15:00 |  |  | 50% → 0% | 0d → 0.25d |  |  |
| 42 | Hito: HU-06 terminada y probada | 2026-10-22 13:00 → 2026-10-29 09:00 (+7d) | 2026-10-22 13:00 → 2026-10-29 09:00 (+7d) |  |  | 5.5d → 2d |  | constraint none → start no earlier than 2026-10-29 09:00 |
| 43 | **HU-07: Consultar la ocupación de un taller** | 2026-10-19 15:00 A | 2026-10-22 19:00 → 2026-10-27 09:00 (+5d) | 3.5d → 5.5d | 0% → 50% | 2.5d → 4d |  |  |
| 44 | HU-07 · Lógica: contar ocupadas, libres y espera | 2026-10-19 15:00 A | 2026-10-19 19:00 A |  | 0% → 100% | 5d → none |  | resources Santiago → Gonzalo |
| 45 | HU-07 · Pruebas pytest: ocupadas, libres, espera/máximo; la consulta no cambia datos | 2026-10-20 15:00 A |  |  | 0% → 50% | 4.5d → 5.5d |  |  |
| 46 | HU-07 · HTML básico: tabla de ocupación | 2026-10-22 09:00 A |  |  | 0% → 50% | 0d → 0.5d |  |  |
| 48 | Hito: HU-07 terminada y probada | 2026-10-22 19:00 → 2026-10-27 09:00 (+5d) | 2026-10-22 19:00 → 2026-10-27 09:00 (+5d) |  |  | 5d → 4d |  | constraint none → start no earlier than 2026-10-27 09:00 |
| 49 | **HU-08: Consultar el estado de mis inscripciones** | 2026-10-19 15:00 A | 2026-10-23 13:00 → 2026-10-27 09:00 (+4d) | 4d → 5.5d | 0% → 50% | 0.75d → 4d |  |  |
| 50 | HU-08 · Lógica: estado y posición por taller | 2026-10-19 15:00 A | 2026-10-19 19:00 A |  | 0% → 100% | 0.75d → none |  |  |
| 51 | HU-08 · Pruebas pytest: estado y posición de cada inscripción | 2026-10-20 15:00 A | 2026-10-20 19:00 A |  | 0% → 100% | 0.25d → none |  |  |
| 54 | Hito: HU-08 terminada y probada | 2026-10-23 13:00 → 2026-10-27 09:00 (+4d) | 2026-10-23 13:00 → 2026-10-27 09:00 (+4d) |  |  | 4.5d → 4d |  | constraint none → start no earlier than 2026-10-27 09:00 |
| 55 | **HU-09: Historial de cancelaciones y bloqueo (provisional)** |  | 2026-10-26 19:00 → 2026-10-28 09:00 (+2d) | 4d → 5d | 8% → 33% |  |  |  |
| 56 | HU-09 · Lógica: historial y bloqueo de 1 dia |  | 2026-10-21 19:00 A |  | 25% → 100% | 1d → none |  | was named HU-09 · Lógica: historial y bloqueo provisional |
| 60 | Hito: HU-09 terminada y probada | 2026-10-26 19:00 → 2026-10-28 09:00 (+2d) | 2026-10-26 19:00 → 2026-10-28 09:00 (+2d) |  |  |  |  | constraint none → start no earlier than 2026-10-28 09:00 |
| 69 | **HU-10: Buscar inscripciones por participante o taller** |  | 2026-10-27 13:00 → 2026-10-29 09:00 (+2d) | 4.5d → 6d |  | 2.5d → 2d |  |  |
| 74 | Hito: HU-10 terminada y probada | 2026-10-27 13:00 → 2026-10-29 09:00 (+2d) | 2026-10-27 13:00 → 2026-10-29 09:00 (+2d) |  |  | 2.5d → 2d |  | constraint none → start no earlier than 2026-10-29 09:00 |
| 75 | **HU-11: Lista de confirmados para el instructor** |  | 2026-10-28 13:00 → 2026-10-30 09:00 (+2d) | 2.5d → 4d |  | 1.5d → 1d |  |  |
| 80 | Hito: HU-11 terminada y probada | 2026-10-28 13:00 → 2026-10-30 09:00 (+2d) | 2026-10-28 13:00 → 2026-10-30 09:00 (+2d) |  |  | 1.5d → 1d |  | constraint none → start no earlier than 2026-10-30 09:00 |
| 81 | **FASE FINAL: INTEGRACIÓN, CAMBIOS Y ENTREGA** | 2026-10-14 09:00 → 2026-10-15 09:00 A (+1d) | 2026-10-29 19:00 → 2026-11-02 09:00 (+4d) |  | 0% → 8% |  |  |  |
| 82 | Cargar datos de demostración en SQL | 2026-10-14 09:00 → 2026-10-15 09:00 A (+1d) | 2026-10-14 19:00 → 2026-10-30 19:00 (+16d) | 1d → 12d | 0% → 4% | 11d → 0d |  | resources none → Gonzalo |
| 83 | Solicitudes simultáneas por la última plaza (TAL-RC-01) | 2026-10-26 09:00 A |  |  | 0% → 50% | 0d → 2d |  | resources none → Andrea |
| 84 | CU-17 · Cancelar un taller completo, lógica y pruebas (provisional) |  |  |  |  | 2d → 3d |  | resources none → Andrea |
| 85 | CU-18 · Reducir el cupo, lógica y pruebas (cuando el cliente defina quién pasa a espera) |  |  |  |  | 5d → 6d |  | resources none → Gonzalo |
| 86 | Pruebas de integración con la base de datos y CI en main |  |  |  |  | 0d → 2d |  | resources none → Santiago |
| 88 | README, instrucciones y matriz requisitos-pruebas |  |  |  |  | 0d → 2d | 86 → 86, 87 | resources none → Andrea; Gonzalo; Santiago |
| 89 | Ensayo de la demostración y correcciones | 2026-10-29 09:00 → 2026-10-28 19:00 (-1d) | 2026-10-29 19:00 → 2026-10-28 19:00 (-1d) | 1d → 0d |  | 0d → 2d |  | resources none → Andrea; Gonzalo; Santiago |

## Version 3 (data date 2026-10-26, saved 2026-10-26, file DiagramaIncremento1.0.mpp)

Note of the change: Gantt 26/10: corregir ensayo, hito final, HU-12 automático, diagramas y avance de HU-08

Last finish stays 2026-11-02. Complete tasks 22 → 23.

Changed:

| ID | Task | Start | Finish | Duration | Complete | Total float | Predecessors |
| --- | --- | --- | --- | --- | --- | --- | --- |
| 61 | **HU-12: Registro e inicio de sesión** |  | 2026-10-30 19:00 → 2026-10-27 19:00 (-3d) | 8d → 5d |  | none → 3d |  |
| 87 | Diagramas: clases, secuencia y ER | 2026-10-15 09:00 A → 2026-10-28 09:00 A (+13d) | 2026-10-15 19:00 → 2026-10-28 13:00 A (+13d) | 1d → 0.5d | 50% → 100% | 10d → none |  |
| 88 | README, instrucciones y matriz requisitos-pruebas | 2026-10-28 09:00 → 2026-10-28 15:00 | 2026-10-28 19:00 → 2026-10-29 13:00 (+1d) |  |  | 2d → 0.5d |  |
| 89 | Ensayo de la demostración y correcciones | 2026-10-28 19:00 → 2026-10-29 15:00 (+1d) | 2026-10-28 19:00 → 2026-10-30 13:00 (+2d) | 0d → 1d |  | 2d → 0.5d |  |
| 90 | Hito: proyecto listo para la entrega |  |  |  |  |  | none → 89 |
